# Gant_v1

How a schedule from MS Project changed from version to version. A marks actual dates.

## Version 1 (saved 2013-04-20)

Note of the change: Corrected Milestones

| ID | WBS | Task | Duration | Start | Finish | Predecessors | Total float | Constraint |
| --- | --- | --- | --- | --- | --- | --- | --- | --- |
| 2 |  | SRS REVIEW | 0d | 2013-05-06 | 2013-05-06 |  |  |  |
| 3 | 2 | **Requirements Analysis** | 26.58d | 2013-04-08 | 2013-05-08 |  | 2d |  |
| 4 |  | Elicitation (brainstorming) + Use Case Diagram (draft) | 1.86d | 2013-04-08 | 2013-04-09 |  | 2d |  |
| 5 |  | Use Cases definition + Mockups + Business Rules | 4.4d | 2013-04-09 | 2013-04-16 | 4 | 43.6d |  |
| 6 |  | Risk meeting | 0.75d | 2013-04-22 | 2013-04-22 |  | 38.11d | start no earlier than 2013-04-20 |
| 7 |  | Requirements Definition + SRS production | 10d | 2013-04-11 | 2013-04-25 | 4 | 0d | start no earlier than 2013-04-11 |
| 8 |  | Acceptance tests planning | 6.5d | 2013-04-16 | 2013-04-25 | 4 | 35.5d | start no earlier than 2013-04-16 |
| 9 | 2.6 | **SRS Inspection** | 10.72d | 2013-04-25 | 2013-05-08 | 7 | 0d |  |
| 10 |  | Planning + Preparation | 1.86d | 2013-04-25 | 2013-04-29 | 7 | 0d |  |
| 11 |  | Meeting | 2.86d | 2013-04-29 | 2013-05-02 | 10 | 0d |  |
| 12 |  | Rework + Followup | 4d | 2013-05-02 | 2013-05-08 | 11 | 0d |  |
| 13 |  | Reestimate | 2d | 2013-05-02 | 2013-05-06 | 11 | 26.28d |  |
| 14 |  | CODE REVIEW | 0d | 2013-05-29 | 2013-05-29 |  |  |  |
| 15 | 4 | **Development** | 27.72d | 2013-04-25 | 2013-05-28 | 7 | 6.36d |  |
| 16 | 4.1 | **Database** | 4.36d | 2013-04-25 | 2013-05-01 |  | 6.36d |  |
| 17 |  | Architecture definition (ER diagram) | 1.5d | 2013-04-25 | 2013-04-29 | 7 | 6.36d |  |
| 18 |  | Walkthrough | 1.86d | 2013-04-29 | 2013-05-01 | 17 | 6.36d |  |
| 19 | 4.2 | **Coding** | 17d | 2013-05-08 | 2013-05-28 | 12 | 0d |  |
| 20 |  | Database Module Implementation | 5d | 2013-05-08 | 2013-05-15 | 18 | 0d | start no earlier than 2013-05-07 |
| 21 | 4.2.2 | **Adding tasks** | 7d | 2013-05-08 | 2013-05-16 |  | 7.28d |  |
| 22 |  | Adding tasks - UI | 1d | 2013-05-08 | 2013-05-09 |  | 8.28d |  |
| 23 |  | Adding tasks - Functionality | 3d | 2013-05-09 | 2013-05-14 | 22 | 8.28d |  |
| 24 |  | Adding tasks - Integration | 1d | 2013-05-15 | 2013-05-16 | 20, 23 | 7.28d |  |
| 25 | 4.2.3 | **Show tasks details** | 7d | 2013-05-08 | 2013-05-16 |  | 17.28d |  |
| 26 |  | Show tasks details - UI | 1d | 2013-05-08 | 2013-05-09 |  | 18.28d |  |
| 27 |  | Show tasks details - Functionality | 3d | 2013-05-09 | 2013-05-14 | 26 | 18.28d |  |
| 28 |  | Show tasks details - Integration | 1d | 2013-05-15 | 2013-05-16 | 20, 27 | 17.28d |  |
| 29 | 4.2.4 | **Show tasks listing** | 7d | 2013-05-08 | 2013-05-16 |  | 17.28d |  |
| 30 |  | Show tasks listing - UI | 1d | 2013-05-08 | 2013-05-09 |  | 18.28d |  |
| 31 |  | Show tasks listing - Functionality | 3d | 2013-05-09 | 2013-05-14 | 30 | 18.28d |  |
| 32 |  | Show tasks listing - Integration | 1d | 2013-05-15 | 2013-05-16 | 20, 31 | 17.28d |  |
| 33 | 4.2.5 | **Inactivity Alerts** | 10d | 2013-05-16 | 2013-05-28 | 21 | 7.28d |  |
| 34 |  | Inactivity Alerts (detection) | 8d | 2013-05-16 | 2013-05-28 |  | 7.28d | start no earlier than 2013-05-07 |
| 35 | 4.2.5.2 | **Inactivity alerts (user reaction)** | 10d | 2013-05-16 | 2013-05-28 |  | 7.28d |  |
| 36 |  | Inactivity alerts (user reaction)- UI | 1d | 2013-05-16 | 2013-05-17 |  | 7.28d |  |
| 37 |  | Inactivity alerts (user reaction) - Functionality | 6d | 2013-05-17 | 2013-05-27 | 36 | 7.28d |  |
| 38 |  | Inactivity alerts (user reaction) - Integration | 1d | 2013-05-27 | 2013-05-28 | 20, 37 | 7.28d |  |
| 39 | 4.2.6 | **Edit and Delete task** | 6d | 2013-05-16 | 2013-05-23 | 21 | 11.28d |  |
| 40 |  | Edit and Delete task - UI | 1d | 2013-05-16 | 2013-05-17 |  | 11.28d |  |
| 41 |  | Edit and Delete task - Functionality | 3d | 2013-05-17 | 2013-05-22 | 40 | 11.28d |  |
| 42 |  | Edit and Delete task - Integration | 1d | 2013-05-22 | 2013-05-23 | 41 | 11.28d |  |
| 43 |  | Export app data | 8d | 2013-05-15 | 2013-05-27 | 20 | 8.28d |  |
| 44 |  | Timing individual tasks | 5d | 2013-05-15 | 2013-05-22 | 20 | 12.28d |  |
| 45 | 4.2.9 | **Code Inspection** | 10.72d | 2013-05-15 | 2013-05-28 | 20 | 0d |  |
| 46 |  | Planning + Preparation | 1.86d | 2013-05-15 | 2013-05-17 |  | 0d |  |
| 47 |  | Meeting | 2.86d | 2013-05-17 | 2013-05-22 | 46 | 0d |  |
| 48 |  | Rework + Followup | 4d | 2013-05-22 | 2013-05-28 | 47 | 0d |  |
| 49 |  | ACCEPTANCE | 0d | 2013-06-03 | 2013-06-03 |  |  |  |
| 50 | 6 | **Acceptance Tests** | 7.56d | 2013-05-28 | 2013-06-05 | 45 | 0d |  |
| 51 |  | Execution | 6.5d | 2013-05-28 | 2013-06-05 |  | 0d |  |
| 52 |  | Fixing | 6.5d | 2013-05-28 | 2013-06-05 |  | 0.06d |  |

## Version 2 (saved 2013-05-10)

Note of the change: cleanup

Last finish 2013-06-05 → 2013-06-04 (-1d).

Added:

| ID | Task | Duration | Start | Finish | Predecessors | Constraint | Resources |
| --- | --- | --- | --- | --- | --- | --- | --- |
| 5 | 1 | 0.75d | 2013-04-08 | 2013-04-08 |  |  | Carla Machado |
| 6 | 2 | 0.75d | 2013-04-08 | 2013-04-08 |  |  | David João |
| 7 | 3 | 0.75d | 2013-04-08 | 2013-04-08 |  |  | Filipe Brandão |
| 8 | 4 | 0.75d | 2013-04-08 | 2013-04-08 |  |  | João Girão |
| 9 | 5 | 0.75d | 2013-04-08 | 2013-04-08 |  |  | João Martins |
| 10 | 6 | 0.75d | 2013-04-08 | 2013-04-08 |  |  | Mário Oliveira |
| 11 | 7 | 0.75d | 2013-04-08 | 2013-04-08 |  |  | Rui Ganhoto |
| 13 | Writing Use Cases | 4.5d | 2013-04-10 | 2013-04-15 |  |  | Carla Machado |
| 14 | Updated Use Cases | 0.75d | 2013-04-20 | 2013-04-20 |  |  | Carla Machado |
| 15 | Use Case Definition | 2.75d | 2013-04-09 | 2013-04-11 |  |  | Rui Ganhoto |
| 16 | Mockups + Business Rules | 3d | 2013-04-11 | 2013-04-13 |  |  | Filipe Brandão |
| 19 | Requirements Definition | 3d | 2013-04-09 | 2013-04-11 |  |  | Mário Oliveira |
| 20 | Interview + Requirements Definition | 4d | 2013-04-17 | 2013-04-20 |  |  | Mário Oliveira |
| 21 | Requirements Definition | 5d | 2013-04-21 | 2013-04-25 |  |  | Mário Oliveira |
| 22 | Requirements Definition | 3d | 2013-04-09 | 2013-04-11 |  |  | João Girão |
| 23 | Interview + Requirements Definition | 4d | 2013-04-17 | 2013-04-20 |  |  | João Girão |
| 24 | Requirements Definition | 5d | 2013-04-21 | 2013-04-25 |  |  | João Girão |
| 25 | Interview | 1.25d | 2013-04-18 | 2013-04-19 |  |  | João Martins |
| 26 | Help | 4d | 2013-04-21 | 2013-04-24 |  |  | Carla Machado |
| 28 | Acceptance tests | 5.25d | 2013-04-13 | 2013-04-19 |  |  | João Martins |
| 29 | Rework + Continuation | 4.5d | 2013-04-20 | 2013-04-25 |  |  | João Martins |
| 30 | New Tests | 0.5d | 2013-04-27 | 2013-04-27 |  |  | João Martins |
| 31 | Tests | 0.25d | 2013-05-01 | 2013-05-01 |  |  | João Martins |
| 32 | Acceptance Tests | 5.25d | 2013-04-14 | 2013-04-19 |  |  | David João |
| 33 | Continuation | 3.5d | 2013-04-20 | 2013-04-24 |  |  | David João |
| 34 | Tests | 0.25d | 2013-05-01 | 2013-05-01 |  |  | David João |
| 37 | Study of the SRS | 1.25d | 2013-04-29 | 2013-04-30 |  | start no earlier than 2013-04-28 | Carla Machado |
| 38 | Study of the SRS | 2.25d | 2013-04-28 | 2013-04-30 |  |  | David João |
| 39 | Study of the SRS | 1.75d | 2013-04-28 | 2013-04-29 |  |  | Filipe Brandão |
| 40 | sTudy of the SRS | 2.5d | 2013-04-28 | 2013-04-30 |  |  | Rui Ganhoto |
| 41 | Study of the SRS | 2.5d | 2013-04-28 | 2013-04-30 |  |  | João Martins |
| 43 | Replan | 6d | 2013-05-06 | 2013-05-11 |  |  | Filipe Brandão |
| 49 | ER model | 0.75d | 2013-04-28 | 2013-04-28 |  |  | Filipe Brandão |
| 50 | ER Model | 1.5d | 2013-04-27 | 2013-04-29 |  |  | João Martins |
| 77 | Shortcuts | 5d | 2013-05-24 | 2013-05-31 | 54 |  | David João |
| 78 | Settings | 5d | 2013-05-23 | 2013-05-29 | 71 |  | João Martins |
| 83 | Rework | 2d | 2013-05-22 | 2013-05-23 | 82 |  | Rui Ganhoto |
| 89 | **Management** | 13.5d | 2013-05-18 | 2013-06-03 |  |  |  |
| 90 | Project | 1.5d | 2013-05-18 | 2013-05-20 |  |  | Filipe Brandão |
| 91 | Quality | 1.5d | 2013-05-18 | 2013-05-20 |  |  | Carla Machado |
| 92 | Risk | 0.25d | 2013-05-18 | 2013-05-18 |  |  | Rui Ganhoto |
| 93 | Repository | 0.25d | 2013-05-18 | 2013-05-18 |  |  | Mário Oliveira |
| 94 | Project | 1.5d | 2013-05-25 | 2013-05-27 |  |  | Filipe Brandão |
| 95 | Quality | 1.5d | 2013-05-25 | 2013-05-27 |  |  | Carla Machado |
| 96 | Risk | 0.25d | 2013-05-25 | 2013-05-25 |  |  | Rui Ganhoto |
| 97 | Repository | 0.25d | 2013-05-25 | 2013-05-25 |  |  | Mário Oliveira |
| 98 | Project | 1.5d | 2013-06-01 | 2013-06-03 |  |  | Filipe Brandão |
| 99 | Quality | 1.5d | 2013-06-01 | 2013-06-03 |  |  | Carla Machado |
| 100 | Risk | 0.25d | 2013-06-01 | 2013-06-01 |  |  | Rui Ganhoto |
| 101 | Repository | 0.25d | 2013-06-01 | 2013-06-01 |  |  | Mário Oliveira |
| 102 | **Minutes** | 13d | 2013-05-13 | 2013-05-27 |  |  |  |
| 103 | 1 | 1d | 2013-05-13 | 2013-05-13 |  |  | João Martins |
| 104 | 2 | 1d | 2013-05-20 | 2013-05-20 |  |  |  |
| 105 | 3 | 1d | 2013-05-27 | 2013-05-27 |  |  |  |

Removed: 11 Meeting

Changed:

| ID | Task | Start | Finish | Duration | Total float | Predecessors | Other |
| --- | --- | --- | --- | --- | --- | --- | --- |
| 3 | **Requirements Analysis** |  | 2013-05-08 → 2013-05-11 (+3d) | 26.58d → 30d | 2d → 0d |  |  |
| 4 | **Elicitation (brainstorming) + Use Case Diagram (draft)** |  | 2013-04-09 → 2013-04-08 (-1d) | 1.86d → 0.75d | 2d → none |  | resources Carla Machado; David João; Filipe Brandão; João Girão; João Martins; Mário Oliveira; Rui Ganhoto → none |
| 12 | **Use Cases definition + Mockups + Business Rules** |  | 2013-04-16 → 2013-04-20 (+4d) | 4.4d → 10.75d | 43.6d → 0d |  | resources Filipe Brandão; Rui Ganhoto; Carla Machado → none |
| 17 | Risk meeting | 2013-04-22 → 2013-04-20 (-2d) | 2013-04-22 → 2013-04-20 (-2d) |  | 38.11d → none |  | resources Carla Machado; David João; Filipe Brandão; João Girão; João Martins; Mário Oliveira; Rui Ganhoto → Carla Machado; David João; Filipe Brandão; João Girão; Mário Oliveira; Rui Ganhoto |
| 18 | **Requirements Definition + SRS production** | 2013-04-11 → 2013-04-09 (-2d) |  | 10d → 15d | 0d → none |  | constraint start no earlier than 2013-04-11 → none; resources Mário Oliveira; João Girão → none |
| 27 | **Acceptance tests planning** | 2013-04-16 → 2013-04-13 (-3d) | 2013-04-25 → 2013-05-01 (+6d) | 6.5d → 15.25d | 35.5d → 0d |  | constraint start no earlier than 2013-04-16 → none; resources João Martins; David João → none |
| 35 | **SRS Inspection** | 2013-04-25 → 2013-04-26 (+1d) | 2013-05-08 → 2013-05-11 (+3d) | 10.72d → 14d | 0d → 2d |  |  |
| 36 | **Planning + Preparation** | 2013-04-25 → 2013-04-28 (+3d) | 2013-04-29 → 2013-04-30 (+1d) | 1.86d → 1.5d |  |  | resources Carla Machado; David João; Filipe Brandão; João Girão; João Martins; Mário Oliveira; Rui Ganhoto → none |
| 42 | Rework + Followup | 2013-05-02 → 2013-04-26 (-6d) | 2013-05-08 → 2013-05-01 (-7d) |  | 0d → 29d | Meeting → none |  |
| 44 | Reestimate | 2013-05-02 → 2013-05-06 (+4d) | 2013-05-06 → 2013-05-07 (+1d) | 2d → 1.25d | 26.28d → 24.75d | Meeting → none | constraint none → start no earlier than 2013-05-06 |
| 45 | CODE REVIEW | 2013-05-29 → 2013-05-17 (-12d) | 2013-05-29 → 2013-05-17 (-12d) |  |  |  |  |
| 46 | **Development** | 2013-04-25 → 2013-04-27 (+2d) | 2013-05-28 → 2013-06-04 (+7d) | 27.72d → 33d | 6.36d → 0d |  |  |
| 47 | **Database** | 2013-04-25 → 2013-04-27 (+2d) | 2013-05-01 → 2013-05-06 (+5d) | 4.36d → 7.25d | 6.36d → -0.12d |  |  |
| 48 | **Architecture definition (ER diagram)** | 2013-04-25 → 2013-04-27 (+2d) |  |  | 6.36d → 0d |  | resources João Martins; Filipe Brandão → none |
| 51 | Walkthrough | 2013-04-29 → 2013-05-06 (+7d) | 2013-05-01 → 2013-05-06 (+5d) | 1.86d → 0.25d | 6.36d → -1.12d | 48 → none | constraint none → start no earlier than 2013-05-06 |
| 52 | **Coding** | 2013-05-08 → 2013-05-13 (+5d) | 2013-05-28 → 2013-06-04 (+7d) | 17d → 20d | 0d → none |  |  |
| 53 | Database Module Implementation | 2013-05-08 → 2013-05-07 (-1d) | 2013-05-15 → 2013-05-16 (+1d) | 5d → 8d | 0d → -0.88d |  |  |
| 54 | **Adding tasks** |  | 2013-05-16 → 2013-05-24 (+8d) | 7d → 14.12d | 7.28d → none |  |  |
| 55 | Adding tasks - UI |  |  | 1d → 2d | 8.28d → 22d |  | constraint none → start no earlier than 2013-05-08 |
| 56 | Adding tasks - Functionality | 2013-05-09 → 2013-05-17 (+8d) | 2013-05-14 → 2013-05-23 (+9d) | 3d → 5d | 8.28d → -0.88d | 55 → 53, 55 |  |
| 57 | Adding tasks - Integration | 2013-05-15 → 2013-05-24 (+9d) | 2013-05-16 → 2013-05-24 (+8d) |  | 7.28d → -0.88d |  |  |
| 58 | **Show tasks details** |  | 2013-05-16 → 2013-05-22 (+6d) | 7d → 12.12d | 17.28d → none |  |  |
| 59 | Show tasks details - UI |  | 2013-05-09 → 2013-05-08 (-1d) |  | 18.28d → 23d |  | constraint none → start no earlier than 2013-05-08; resources João Girão → David João |
| 60 | Show tasks details - Functionality | 2013-05-09 → 2013-05-17 (+8d) | 2013-05-14 → 2013-05-21 (+7d) |  | 18.28d → -0.88d | 59 → 53 |  |
| 61 | Show tasks details - Integration | 2013-05-15 → 2013-05-22 (+7d) | 2013-05-16 → 2013-05-22 (+6d) |  | 17.28d → -0.88d |  |  |
| 62 | **Show tasks listing** | 2013-05-08 → 2013-05-15 (+7d) | 2013-05-16 → 2013-05-29 (+13d) | 7d → 13d | 17.28d → none |  |  |
| 63 | Show tasks listing - UI | 2013-05-08 → 2013-05-15 (+7d) | 2013-05-09 → 2013-05-16 (+7d) | 1d → 2d | 18.28d → -2d |  | resources Mário Oliveira → Rui Ganhoto |
| 64 | Show tasks listing - Functionality | 2013-05-09 → 2013-05-17 (+8d) | 2013-05-14 → 2013-05-30 (+16d) | 3d → 10d | 18.28d → -2d |  |  |
| 65 | Show tasks listing - Integration | 2013-05-15 → 2013-05-31 (+16d) | 2013-05-16 → 2013-05-31 (+15d) |  | 17.28d → -2d |  |  |
| 66 | **Inactivity Alerts** | 2013-05-16 → 2013-05-08 (-8d) | 2013-05-28 → 2013-06-03 (+6d) | 10d → 23d | 7.28d → 0d | 54 → 58, 54 |  |
| 67 | Inactivity Alerts (detection) | 2013-05-16 → 2013-05-23 (+7d) | 2013-05-28 → 2013-06-03 (+6d) |  | 7.28d → 1d | none → 61 | constraint start no earlier than 2013-05-07 → start no earlier than 2013-05-15; resources João Martins → João Girão |
| 68 | **Inactivity alerts (user reaction)** | 2013-05-16 → 2013-05-08 (-8d) | 2013-05-28 → 2013-05-22 (-6d) | 10d → 12.12d | 7.28d → none |  |  |
| 69 | Inactivity alerts (user reaction)- UI | 2013-05-16 → 2013-05-08 (-8d) | 2013-05-17 → 2013-05-08 (-9d) |  | 7.28d → 23d |  | constraint none → start no earlier than 2013-05-08; resources Mário Oliveira → David João |
| 70 | Inactivity alerts (user reaction) - Functionality |  | 2013-05-27 → 2013-05-21 (-6d) | 6d → 3d | 7.28d → -0.88d | 69 → 53, 69 | resources Mário Oliveira → João Martins |
| 71 | Inactivity alerts (user reaction) - Integration | 2013-05-27 → 2013-05-22 (-5d) | 2013-05-28 → 2013-05-22 (-6d) |  | 7.28d → -0.88d |  | resources Mário Oliveira → João Martins |
| 72 | **Edit and Delete task** | 2013-05-16 → 2013-05-15 (-1d) |  | 6d → 8d | 11.28d → none |  |  |
| 73 | Edit and Delete task - UI | 2013-05-16 → 2013-05-15 (-1d) | 2013-05-17 → 2013-05-16 (-1d) | 1d → 2d | 11.28d → -1d |  |  |
| 74 | Edit and Delete task - Functionality |  | 2013-05-22 → 2013-05-23 (+1d) | 3d → 5d | 11.28d → -1d |  | resources Rui Ganhoto → Carla Machado |
| 75 | Edit and Delete task - Integration | 2013-05-22 → 2013-05-24 (+2d) | 2013-05-23 → 2013-05-24 (+1d) |  | 11.28d → -1d |  | resources Rui Ganhoto → Carla Machado |
| 76 | Export app data | 2013-05-15 → 2013-05-17 (+2d) | 2013-05-27 → 2013-05-23 (-4d) | 8d → 5d | 8.28d → 10d |  | constraint none → start no earlier than 2013-05-15; resources João Girão → Filipe Brandão |
| 79 | Timing individual tasks | 2013-05-15 → 2013-05-17 (+2d) | 2013-05-22 → 2013-05-28 (+6d) | 5d → 8d | 12.28d → 6d |  | resources David João → Rui Ganhoto |
| 80 | **Code Inspection** | 2013-05-15 → 2013-05-17 (+2d) | 2013-05-28 → 2013-05-24 (-4d) | 10.72d → 7d | 0d → 4d |  |  |
| 81 | Preparation | 2013-05-15 → 2013-05-17 (+2d) | 2013-05-17 → 2013-05-20 (+3d) | 1.86d → 2d | 0d → 8d |  | was named Planning + Preparation; resources Carla Machado; David João; Filipe Brandão; João Girão; João Martins; Mário Oliveira; Rui Ganhoto → David João; Carla Machado; João Girão; João Martins; Mário Oliveira |
| 82 | Meeting | 2013-05-17 → 2013-05-21 (+4d) |  | 2.86d → 2d | 0d → 8d |  |  |
| 84 | Followup | 2013-05-22 → 2013-05-24 (+2d) | 2013-05-28 → 2013-05-24 (-4d) | 4d → 1d | 0d → 9d | 82 → 83 | was named Rework + Followup; resources Rui Ganhoto → Filipe Brandão |
| 85 | ACCEPTANCE | 2013-06-03 → 2013-05-31 (-3d) | 2013-06-03 → 2013-05-31 (-3d) |  |  |  |  |
| 86 | **Acceptance Tests** | 2013-05-28 → 2013-05-31 (+3d) | 2013-06-05 → 2013-06-03 (-2d) | 7.56d → 2.5d | 0d → none | 80 → none |  |
| 87 | Execution | 2013-05-28 → 2013-05-31 (+3d) | 2013-06-05 → 2013-06-03 (-2d) | 6.5d → 2.5d | 0d → none |  | constraint none → start no earlier than 2013-05-31 |
| 88 | Fixing | 2013-05-28 → 2013-05-31 (+3d) | 2013-06-05 → 2013-05-31 (-5d) | 6.5d → 1d | 0.06d → 3d |  | constraint none → start no earlier than 2013-05-31; resources David João; Mário Oliveira; João Girão → David João; Mário Oliveira; João Girão; João Martins; Rui Ganhoto |
